# ShopMetrics - Desarrollo de la plataforma

Schedule from MS Project XML, 2025-01-06 to 2025-10-31.
ShopMetrics

## Calendars

- Standard: Mon-Fri 08:00-12:00, 13:00-17:00; Sat-Sun off.

## Resources

| Resource | Rate |
| --- | --- |
| Gerente de Sistemas (CTO) | 16.27 |
| Desarrollador | 14.64 |
| Gerente General (CEO) | 16.27 |

## Schedule

| ID | WBS | Task | Duration | Start | Finish | Predecessors | Resources | Work |
| --- | --- | --- | --- | --- | --- | --- | --- | --- |
| 1 | 1 | **1. Definición y arquitectura** |  | 2025-01-06 | 2025-01-31 |  |  |  |
| 2 | 1.1 | Relevamiento funcional y alcance del producto | 8d | 2025-01-06 | 2025-01-15 |  | Gerente de Sistemas (CTO); Gerente General (CEO) [50%] | 96h |
| 3 | 1.2 | Arquitectura de la solución y elección del stack | 7d | 2025-01-16 | 2025-01-24 | 2 | Gerente de Sistemas (CTO) | 56h |
| 4 | 1.3 | Modelo de datos y diccionario | 5d | 2025-01-27 | 2025-01-31 | 3 | Gerente de Sistemas (CTO); Desarrollador [50%] | 60h |
| 5 | 2 | **2. Base de datos y cimientos** |  | 2025-02-03 | 2025-02-21 |  |  |  |
| 6 | 2.1 | Esquema, migraciones y series temporales | 8d | 2025-02-03 | 2025-02-12 | 4 | Desarrollador; Gerente de Sistemas (CTO) [50%] | 96h |
| 7 | 2.2 | Entorno de desarrollo y automatización de pruebas | 7d | 2025-02-13 | 2025-02-21 | 6 | Desarrollador | 56h |
| 8 | 3 | **3. Integración con sistemas externos** |  | 2025-02-24 | 2025-04-04 |  |  |  |
| 9 | 3.1 | Conectores con puntos de venta | 12d | 2025-02-24 | 2025-03-11 | 7 | Desarrollador; Gerente de Sistemas (CTO) [50%] | 144h |
| 10 | 3.2 | Ingesta de sensores de conteo | 10d | 2025-03-12 | 2025-03-25 | 9 | Desarrollador | 80h |
| 11 | 3.3 | Monitoreo de salud de las integraciones | 8d | 2025-03-26 | 2025-04-04 | 10 | Desarrollador | 64h |
| 12 | 4 | **4. Motor de métricas e indicadores** |  | 2025-04-07 | 2025-05-02 |  |  |  |
| 13 | 4.1 | Cálculo de tráfico, conversión, ventas y vacancia | 12d | 2025-04-07 | 2025-04-22 | 11 | Desarrollador; Gerente de Sistemas (CTO) [50%] | 144h |
| 14 | 4.2 | Agregados por hora, zona y locatario | 8d | 2025-04-23 | 2025-05-02 | 13 | Desarrollador | 64h |
| 15 | 5 | **5. Panel web del centro** |  | 2025-05-05 | 2025-06-11 |  |  |  |
| 16 | 5.1 | Sistema de diseño y navegación | 6d | 2025-05-05 | 2025-05-12 | 14 | Desarrollador | 48h |
| 17 | 5.2 | Tablero de indicadores y series | 12d | 2025-05-13 | 2025-05-28 | 16 | Desarrollador | 96h |
| 18 | 5.3 | Mapa del centro y ficha de locatarios | 10d | 2025-05-29 | 2025-06-11 | 17 | Desarrollador | 80h |
| 19 | 6 | **6. Motor de reglas y alertas** |  | 2025-06-12 | 2025-07-16 |  |  |  |
| 20 | 6.1 | Definición y evaluación de reglas por umbral | 10d | 2025-06-12 | 2025-06-25 | 18 | Desarrollador; Gerente de Sistemas (CTO) [50%] | 120h |
| 21 | 6.2 | Centro de alertas y ciclo de atención | 10d | 2025-06-26 | 2025-07-09 | 20 | Desarrollador | 80h |
| 22 | 6.3 | Canales de notificación | 5d | 2025-07-10 | 2025-07-16 | 21 | Desarrollador | 40h |
| 23 | 7 | **7. Modelos de Machine Learning** |  | 2025-06-26 | 2025-08-06 |  |  |  |
| 24 | 7.1 | Predicción de riesgo de vacancia | 10d | 2025-06-26 | 2025-07-09 | 20 | Gerente de Sistemas (CTO) | 80h |
| 25 | 7.2 | Recomendación de mix de locatarios | 8d | 2025-07-10 | 2025-07-21 | 24 | Gerente de Sistemas (CTO) | 64h |
| 26 | 7.3 | Detección de anomalías en la operación | 12d | 2025-07-22 | 2025-08-06 | 25 | Gerente de Sistemas (CTO) | 96h |

| ID | WBS | Task | Type | Duration | Start | Finish | Predecessors | Resources | Work |
| --- | --- | --- | --- | --- | --- | --- | --- | --- | --- |
| 27 | 8 | **8. Portal del locatario** |  |  | 2025-07-17 | 2025-08-08 |  |  |  |
| 28 | 8.1 | Tablero del local y comparación con la categoría |  | 12d | 2025-07-17 | 2025-08-01 | 22 | Desarrollador | 96h |
| 29 | 8.2 | Consentimiento sobre el uso de datos |  | 5d | 2025-08-04 | 2025-08-08 | 28 | Desarrollador | 40h |
| 30 | 9 | **9. Vista móvil de operaciones** |  |  | 2025-08-11 | 2025-09-01 |  |  |  |
| 31 | 9.1 | Resolución de alertas en terreno |  | 10d | 2025-08-11 | 2025-08-22 | 29 | Desarrollador | 80h |
| 32 | 9.2 | Historial de turno del operario |  | 6d | 2025-08-25 | 2025-09-01 | 31 | Desarrollador | 48h |
| 33 | 10 | **10. Seguridad, permisos y auditoría** |  |  | 2025-09-02 | 2025-09-22 |  |  |  |
| 34 | 10.1 | Autenticación y matriz de permisos |  | 8d | 2025-09-02 | 2025-09-11 | 32 | Desarrollador; Gerente de Sistemas (CTO) [50%] | 96h |
| 35 | 10.2 | Auditoría de accesos a datos sensibles |  | 7d | 2025-09-12 | 2025-09-22 | 34 | Desarrollador | 56h |
| 36 | 11 | **11. Pruebas y salida a producción** |  |  | 2025-09-23 | 2025-10-31 |  |  |  |
| 37 | 11.1 | Integración de los modelos de ML en el panel y las alertas |  | 6d | 2025-09-23 | 2025-09-30 | 35, 26 | Desarrollador | 48h |
| 38 | 11.2 | Pruebas integrales y corrección |  | 12d | 2025-10-01 | 2025-10-16 | 37 | Desarrollador; Gerente de Sistemas (CTO) | 192h |
| 39 | 11.3 | Documentación y manual de uso |  | 5d | 2025-10-17 | 2025-10-23 | 38 | Desarrollador | 40h |
| 40 | 11.4 | Despliegue y puesta en marcha |  | 6d | 2025-10-24 | 2025-10-31 | 39 | Gerente de Sistemas (CTO); Desarrollador; Gerente General (CEO) [25%] | 108h |
| 41 | 12 | Plataforma lista para salir al mercado | milestone | 0d | 2025-10-31 | 2025-10-31 | 40 |  |  |
